# 前端监控页面

Schedule from a web Gantt chart, 2025-10-28 to 2025-12-09.
Saturdays and Sundays are off

## Schedule

| ID | WBS | Task | Duration | Start | Finish | inPeople |
| --- | --- | --- | --- | --- | --- | --- |
| 2 | 1 | 项目初始化与环境搭建 | 1d | 2025-10-28 | 2025-10-28 | 杨东金 |
| 3 | 2 | 与后端定义API接口规范 | 3d | 2025-10-28 | 2025-10-30 | 杨东金，边浪宇 |
| 4 | 3 | 技术选型与公共库引入 | 2d | 2025-10-29 | 2025-10-30 | 杨东金，熊振东 |
| 5 | 4 | 搭建项目整体布局调整 | 2d | 2025-10-30 | 2025-10-31 | 杨东金 |
| 6 | 5 | 路由与状态管理配置 | 2d | 2025-10-30 | 2025-10-31 | 熊振东 |
| 7 | 6 | API请求模块封装与Mock服务搭建 | 3d | 2025-10-31 | 2025-11-04 | 杨东金，熊振东 |
| 8 | 7 | ECharts等图表库的二次封装 | 3d | 2025-11-03 | 2025-11-05 | 杨东金 |
| 9 | 8 | 登录/注册/用户管理页面 | 4d | 2025-11-05 | 2025-11-10 | 熊振东 |
| 10 | 9 | 首页 (监控中心) | 6d | 2025-11-05 | 2025-11-12 | 杨东金 |
| 11 | 10 | VIN粒度状态监控页 | 5d | 2025-11-12 | 2025-11-18 | 熊振东 |
| 12 | 11 | VIN状态分析/放大页 | 3d | 2025-11-14 | 2025-11-18 | 杨东金 |
| 13 | 12 | 前后端接口联调 | 4d | 2025-11-19 | 2025-11-24 | 杨东金，熊振东，边浪宇 |
| 14 | 13 | 测试与BUG修复 (SIT) | 22d | 2025-10-30 | 2025-11-28 | 杨东金，熊振东 |
| 15 | 14 | 浏览器兼容性与响应式细节调整 | 24d | 2025-10-30 | 2025-12-02 | 杨东金，熊振东 |
| 16 | 15 | 性能优化 | 3d | 2025-11-28 | 2025-12-02 | 杨东金，熊振东 |
| 17 | 16 | 准备部署脚本与文档并部署 | 5d | 2025-12-03 | 2025-12-09 | 杨东金，熊振东 |

Notes:
- 2: Vue3+Vite项目创建，Git仓库，代码规范 (ESLint, Prettier) 配置
- 3: 产出详细的API文档（包括URL, 请求方法, 参数, 返回数据结构）
- 4: 确定并安装Element Plus, ECharts, Axios, Pinia/Vuex, Vue-Router等
- 5: 包含顶部导航、侧边栏（如果需要）、主内容区的通用布局组件
- 6: 配置好所有页面的路由；初始化全局状态管理（如用户信息）
- 7: 封装Axios，建立Mock Server，根据API文档模拟所有接口数据
- 8: 封装一个通用的<Chart>组件，方便传入配置项直接渲染图表
- 9: 登录、注册表单、用户列表、增删改查功能（对接Mock数据）
- 10: [高复杂度] 中国地图可视化、所有图表组件开发与布局
- 11: 页面布局、轮播图、多个小图表的开发与数据联动
- 12: 单一大型图表开发，包含时间选择、图例切换等交互功能
- 13: 替换Mock数据为真实API接口，解决数据格式、请求错误等问题
- 14: 提交测试，根据测试报告集中修复BUG
- 15: 确保在主流浏览器（Chrome, Firefox）下显示正常
- 16: 代码Review，打包优化（代码分割、Gzip），图表懒加载
- 17: 编写部署文档，配置CI/CD（如果需要）并完成最终部署
